# Tailspin Remote Drone 4M

Schedule from MS Project, 2019-01-07 to 2019-06-05, costs in $, A marks actual dates.

## Calendars

- Standard: Mon-Fri 08:00-12:00, 13:00-17:00; Sat-Sun off. Exceptions (off unless hours are given): 2019-01-21 to 2021-01-18 (Martin Luther King Jr. Day , recurring), 2019-05-27 to 2021-05-31 (Memorial Day, recurring).
- survey calender: Mon-Fri 10:00-14:00, 15:00-19:00; Sat-Sun off. Exceptions (off unless hours are given): 2019-01-21 to 2021-01-18 (Martin Luther King Jr. Day , recurring), 2019-05-27 to 2021-05-31 (Memorial Day, recurring).

## Resources

| Resource | Group | Unit | Rate | Notes |
| --- | --- | --- | --- | --- |
| Jamie Reding | Engineering |  | 37.5 | Jamie on vacation Jan 14 and 15; available for consult at home if necessary |
| Scott Seely | Marketing |  | 22.5 |  |
| Jeff Pike | Marketing |  | 25 |  |
| Judy Lew | Management |  | 29.5 |  |
| Brenda Diaz | Admininstrative |  | 19.75 |  |
| Brad Sutton | Marketing |  | 16.5 |  |
| Annette Hill | Administrative |  | 20 |  |
| Ryan Ihrig | Marketing |  | 16 |  |
| Yan Li |  |  | 28.5 |  |
| Model technician | Manufacturing |  | 16.5 |  |
| Digital camera | Equipment |  | 7.5 |  |
| Anemometer | Equipment |  | 0.5 |  |
| Safety tether | Equipment |  | 0.12 |  |
| Clipboards | Supplies |  |  |  |
| Large Conference Room | Facilities |  |  |  |
| Small Conference Room | Facilities |  |  |  |
| SD Card | Equipment | 4 GB | 12 |  |
| Printer paper | Supplies | Ream | 4 |  |
| Travel | Cost |  |  |  |
| Food | Cost |  |  |  |
| Bottled water | Supplies | case | 5 |  |
| Pens | Supplies | 12 count box | 3 |  |
| Survey Team Member | Marketing |  | 15 |  |
| Shu Ito | HR |  | 35 |  |
| Maria Hammond | Quality |  | 27.5 |  |
| Jim Kim | Quality |  | 28 |  |
| Bjorn Rettig | Engineering |  | 35 |  |
| Florian Voss | PMO |  | 37.5 |  |
| Jane Clayton | Manufacturing |  | 42.5 |  |
| Greg Guzik | Manufacturing |  | 32 |  |
| David Barber | Engineering |  | 43.75 |  |
| Eva Corets | Administrative |  | 15 |  |
| Frank Zhang | Management |  | 50 |  |
| Testing Field | Facilities |  |  |  |

## Schedule

| ID | WBS | Task | Type | Duration | Start | Finish | Predecessors | Complete | Remaining | Total slack | Free slack | Calendar | Resources | Work | Actual work | Cost | Actual cost |
| --- | --- | --- | --- | --- | --- | --- | --- | --- | --- | --- | --- | --- | --- | --- | --- | --- | --- |
| 1 | 1 | **Target Market Research and Analysis** |  | 69.12d | 2019-01-07 08:00 A | 2019-04-15 09:00 |  | 9% | 62.78d | 36.75d |  |  |  | 920.4h | 80h | 25,529.39 | 2,180 |
| 2 | 1.1 | **Research** |  | 18.62d | 2019-01-07 08:00 | 2019-02-01 13:56 |  |  |  | 8.45d |  |  |  | 423h |  | 12,108.84 |  |
| 3 | 1.1.1 | Research begins | milestone | 0d | 2019-01-07 08:00 | 2019-01-07 08:00 |  |  |  | 8.45d | 0d |  |  |  |  |  |  |
| 4 | 1.1.2 | **Surveys** |  | 7.99d | 2019-01-07 08:00 | 2019-01-16 16:56 |  |  |  | 8.45d |  |  |  | 129h |  | 2,821.59 |  |
| 5 | 1.1.2.1 | Develop survey questionnaire |  | 2.12d | 2019-01-07 08:00 | 2019-01-08 15:56 | 3 |  |  | 8.45d | 0d |  | Scott Seely; Jeff Pike; Annette Hill [50%]; Brad Sutton | 48h |  | 1,003.73 |  |
| 6 | 1.1.2.2 | Review and approval of survey |  | 1h | 2019-01-08 15:56 | 2019-01-08 16:56 | 5 |  |  | 8.93d | 0d |  | Jeff Pike | 1h |  | 25 |  |
| 7 | 1.1.2.3 | Conduct survey |  | 1w | 2019-01-08 16:56 | 2019-01-16 16:56 | 6 |  |  | 97.88d |  | survey calender | Judy Lew [57.1%]; Scott Seely [57.1%]; Annette Hill [28.6%]; Ryan Ihrig [57.1%]; Bottled water [2 case] | 80h |  | 1,792.86 |  |
| 8 | 1.1.3 | **Focus Groups** |  | 11d | 2019-01-08 16:56 | 2019-01-24 16:56 |  |  |  | 8.93d |  |  |  | 164h |  | 3,926 |  |
| 9 | 1.1.3.1 | Identify focus group member demographics |  | 1d | 2019-01-08 16:56 | 2019-01-09 16:56 | 6 |  |  | 8.93d | 0d |  | Jeff Pike; Yan Li; Brenda Diaz | 24h |  | 586 |  |
| 10 | 1.1.3.2 | Contact potential focus group members |  | 5d | 2019-01-09 16:56 | 2019-01-16 16:56 | 9 |  |  | 8.93d | 0d |  | Survey Team Member; Brad Sutton | 80h |  | 1,260 |  |
| 11 | 1.1.3.3 | Conduct focus groups |  | 1w | 2019-01-16 16:56 | 2019-01-24 16:56 | 10 |  |  | 8.93d | 0d |  | Food [0.1%]; Judy Lew; Annette Hill [50%] | 60h |  | 2,080 |  |
| 12 | 1.1.4 | **Observations** |  | 5.62d | 2019-01-24 16:56 | 2019-02-01 13:56 |  |  |  | 8.93d |  |  |  | 130h |  | 5,361.25 |  |
| 13 | 1.1.4.1 | Identify observation parameters |  | 4h | 2019-01-24 16:56 | 2019-01-25 11:56 | 11 |  |  | 8.93d | 0d |  | Brenda Diaz; Brad Sutton | 8h |  | 145 |  |
| 14 | 1.1.4.2 | Select observation locations |  | 1h | 2019-01-25 11:56 | 2019-01-25 13:56 | 13 |  |  | 8.93d | 0d |  | Brad Sutton; Brenda Diaz | 2h |  | 36.25 |  |
| 15 | 1.1.4.3 | Conduct observations |  | 1w | 2019-01-25 13:56 | 2019-02-01 13:56 | 14 |  |  | 8.93d | 0d |  | Food [0.1%]; Jamie Reding; Jeff Pike; Judy Lew; Travel [0.1%] | 120h |  | 5,180 |  |
| 16 | 1.1.5 | Research complete | milestone | 0d | 2019-02-01 13:56 | 2019-02-01 13:56 | 15 |  |  | 87.26d |  |  |  |  |  |  |  |
| 17 | 1.2 | **Analysis** |  | 69.12d | 2019-01-07 08:00 A | 2019-04-15 09:00 |  | 16% | 57.84d | 36.75d |  |  |  | 497.4h | 80h | 13,420.55 | 2,180 |
| 18 | 1.2.1 | Analysis begins | milestone | 0d | 2019-01-25 13:56 | 2019-01-25 13:56 | 15SS |  |  | 8.93d | 0d |  |  |  |  |  |  |
| 19 | 1.2.2 | **Analysis of Research Data** |  | 25.81d | 2019-01-25 13:56 A | 2019-03-04 11:24 |  | 23% | 19.88d | 0.03d |  |  |  | 377.4h | 80h | 10,138.55 | 2,180 |
| 20 | 1.2.2.1 | Analyze surveys, focus groups, and observations |  | 2.33d | 2019-01-25 13:56 | 2019-01-29 13:36 | 18 |  |  | 8.93d | 0d |  | Jamie Reding; David Barber; Scott Seely; Ryan Ihrig | 54.6h |  | 1,615.25 |  |
| 21 | 1.2.2.2 | Create follow up actions for secondary research |  | 1d | 2019-01-29 13:36 | 2019-01-30 13:36 | 20 |  |  | 9.43d | 4.42d |  | Annette Hill [50%]; Brenda Diaz; Brad Sutton; Eva Corets | 28h |  | 490 |  |
| 22 | 1.2.2.3 | Conduct secondary research |  | 3.69w | 2019-02-06 08:00 A | 2019-03-04 11:24 | 21 | 27% | 2.69w | 0.03d | 0d |  | Jeff Pike; Judy Lew | 294.8h | 80h | 8,033.3 | 2,180 |
| 23 | 1.2.3 | **Report of Research Findings** |  | 69.12d | 2019-01-07 08:00 | 2019-04-15 09:00 |  |  |  | 36.75d |  |  |  | 120h |  | 3,282 |  |
| 24 | 1.2.3.1 | Compile draft copy of report |  | 8h | 2019-03-01 11:24 | 2019-03-04 11:24 | 22FF |  |  | 0.03d | 0d |  | Brenda Diaz | 8h |  | 158 |  |

Notes:
- 7: Contact Mark Hanson in Marketing for additional resource support.

| ID | WBS | Task | Type | Duration | Start | Finish | Predecessors | Total slack | Free slack | Constraint | Resources | Work | Cost |
| --- | --- | --- | --- | --- | --- | --- | --- | --- | --- | --- | --- | --- | --- |
| 25 | 1.2.3.2 | **Status Meeting** |  | 69.12d | 2019-01-07 08:00 | 2019-04-15 09:00 |  | 36.75d |  |  |  |  |  |
| 26 | 1.2.3.2.1 | Status Meeting 1 |  | 1h | 2019-01-07 08:00 | 2019-01-07 09:00 |  | 105.75d |  | start no earlier than 2019-01-07 08:00 |  |  |  |
| 27 | 1.2.3.2.2 | Status Meeting 2 |  | 1h | 2019-03-18 08:00 | 2019-03-18 09:00 |  | 0d |  | must start on 2019-03-18 08:00 |  |  |  |
| 28 | 1.2.3.2.3 | Status Meeting 3 |  | 1h | 2019-01-22 08:00 | 2019-01-22 09:00 |  | 95.75d |  | start no earlier than 2019-01-21 08:00 |  |  |  |
| 29 | 1.2.3.2.4 | Status Meeting 4 |  | 1h | 2019-01-28 08:00 | 2019-01-28 09:00 |  | 91.75d |  | start no earlier than 2019-01-28 08:00 |  |  |  |
| 30 | 1.2.3.2.5 | Status Meeting 5 |  | 1h | 2019-02-04 08:00 | 2019-02-04 09:00 |  | 86.75d |  | start no earlier than 2019-02-04 08:00 |  |  |  |
| 31 | 1.2.3.2.6 | Status Meeting 6 |  | 1h | 2019-02-11 08:00 | 2019-02-11 09:00 |  | 81.75d |  | start no earlier than 2019-02-11 08:00 |  |  |  |
| 32 | 1.2.3.2.7 | Status Meeting 7 |  | 1h | 2019-02-18 08:00 | 2019-02-18 09:00 |  | 76.75d |  | start no earlier than 2019-02-18 08:00 |  |  |  |
| 33 | 1.2.3.2.8 | Status Meeting 8 |  | 1h | 2019-02-25 08:00 | 2019-02-25 09:00 |  | 71.75d |  | start no earlier than 2019-02-25 08:00 |  |  |  |
| 34 | 1.2.3.2.9 | Status Meeting 9 |  | 1h | 2019-03-04 08:00 | 2019-03-04 09:00 |  | 66.75d |  | start no earlier than 2019-03-04 08:00 |  |  |  |
| 35 | 1.2.3.2.10 | Status Meeting 10 |  | 1h | 2019-03-11 08:00 | 2019-03-11 09:00 |  | 61.75d |  | start no earlier than 2019-03-11 08:00 |  |  |  |
| 36 | 1.2.3.2.11 | Status Meeting 11 |  | 1h | 2019-03-18 08:00 | 2019-03-18 09:00 |  | 56.75d |  | start no earlier than 2019-03-18 08:00 |  |  |  |
| 37 | 1.2.3.2.12 | Status Meeting 12 |  | 1h | 2019-03-25 08:00 | 2019-03-25 09:00 |  | 51.75d |  | start no earlier than 2019-03-25 08:00 |  |  |  |
| 38 | 1.2.3.2.13 | Status Meeting 13 |  | 1h | 2019-04-01 08:00 | 2019-04-01 09:00 |  | 46.75d |  | start no earlier than 2019-04-01 08:00 |  |  |  |
| 39 | 1.2.3.2.14 | Status Meeting 14 |  | 1h | 2019-04-08 08:00 | 2019-04-08 09:00 |  | 41.75d |  | start no earlier than 2019-04-08 08:00 |  |  |  |
| 40 | 1.2.3.2.15 | Status Meeting 15 |  | 1h | 2019-04-15 08:00 | 2019-04-15 09:00 |  | 36.75d |  | start no earlier than 2019-04-15 08:00 |  |  |  |
| 41 | 1.2.3.3 | Draft copy review period |  | 5d | 2019-03-04 11:24 | 2019-03-11 11:24 | 24 | 0.03d | 0d |  | Bjorn Rettig; Brad Sutton | 80h | 2,060 |
| 42 | 1.2.3.4 | Review comments and compile final report |  | 1d | 2019-03-11 11:24 | 2019-03-12 11:24 | 41 | 0.03d | 0d |  | Brenda Diaz; David Barber; Jamie Reding; Greg Guzik | 32h | 1,064 |
| 43 | 1.2.4 | Analysis complete | milestone | 0d | 2019-03-12 11:24 | 2019-03-12 11:24 | 42 | 0.03d | 0d |  |  |  |  |
| 44 | 2 | **Design** |  | 8.25d | 2019-03-12 11:24 | 2019-03-22 14:24 |  | 0.03d |  |  |  | 190h | 5,301 |
| 45 | 2.1 | Design begins | milestone | 0d | 2019-03-12 11:24 | 2019-03-12 11:24 | 43 | 0.03d | 0d |  |  |  |  |
| 46 | 2.2 | Research Findings Evaluation |  | 1d | 2019-03-12 11:24 | 2019-03-13 11:24 | 45 | 0.03d | 0d |  | Jamie Reding; Judy Lew; Maria Hammond; David Barber | 32h | 1,106 |
| 47 | 2.3 | Design Document |  | 2d | 2019-03-13 11:24 | 2019-03-15 11:24 | 46 | 0.03d | 0d |  | Jamie Reding; Brenda Diaz | 32h | 916 |
| 48 | 2.4 | Proof of Concept |  | 5d | 2019-03-15 11:24 | 2019-03-22 11:24 | 47 | 0.03d | 0d |  | Model technician; Maria Hammond; Greg Guzik | 120h | 3,040 |
| 49 | 2.5 | Final Design Selection |  | 2h | 2019-03-22 11:24 | 2019-03-22 14:24 | 48 | 0.03d | 0d |  | Frank Zhang; Greg Guzik; Jamie Reding | 6h | 239 |
| 50 | 2.6 | Design complete | milestone | 0d | 2019-03-22 14:24 | 2019-03-22 14:24 | 49 | 0.03d | 0d |  |  |  |  |

| ID | WBS | Task | Type | Duration | Start | Finish | Predecessors | Total slack | Free slack | Resources | Work | Cost |
| --- | --- | --- | --- | --- | --- | --- | --- | --- | --- | --- | --- | --- |
| 51 | 3 | **Product Development** |  | 26d | 2019-03-22 14:24 | 2019-04-29 14:24 |  | 0.03d |  |  | 796h | 17,890 |
| 52 | 3.1 | Product development begins | milestone | 0d | 2019-03-22 14:24 | 2019-03-22 14:24 | 50 | 0.03d | 0d |  |  |  |
| 53 | 3.2 | Initial Prototype |  | 1w | 2019-03-22 14:24 | 2019-03-29 14:24 | 52 | 0.03d | 0d | Model technician [200%]; Jamie Reding; Jane Clayton | 120h | 3,860 |
| 54 | 3.3 | Internal Testing |  | 2w | 2019-03-29 14:24 | 2019-04-12 14:24 | 53 | 0.03d | 0d | Maria Hammond; Jim Kim; Model technician; Jamie Reding [25%]; Testing Field | 340h | 6,510 |
| 55 | 3.4 | Raw Materials List |  | 8h | 2019-04-12 14:24 | 2019-04-15 14:24 | 54 | 0.03d | 0d | Jamie Reding; Eva Corets | 16h | 420 |
| 56 | 3.5 | Parts Designation |  | 2w | 2019-04-15 14:24 | 2019-04-29 14:24 | 55 | 0.03d | 0d | Eva Corets; Jamie Reding; Brad Sutton; Brenda Diaz | 320h | 7,100 |
| 57 | 3.6 | Product development complete | milestone | 0d | 2019-04-29 14:24 | 2019-04-29 14:24 | 56 | 0.03d | 0d |  |  |  |
| 58 | 4 | **Production Planning** |  | 9.25d | 2019-04-29 14:24 | 2019-05-10 16:24 |  | 0.03d |  |  | 380h | 10,971 |
| 59 | 4.1 | Production planning begins | milestone | 0d | 2019-04-29 14:24 | 2019-04-29 14:24 | 57 | 0.03d | 0d |  |  |  |
| 60 | 4.2 | High-level Production Plan |  | 5d | 2019-04-29 14:24 | 2019-05-06 14:24 | 59 | 0.03d | 0d | Bjorn Rettig; Eva Corets; Frank Zhang; Jane Clayton; Large Conference Room; Model technician | 240h | 6,360 |
| 61 | 4.3 | Resource Planning |  | 3d | 2019-05-06 14:24 | 2019-05-09 14:24 | 60 | 0.03d | 0d | Judy Lew; Frank Zhang; Jamie Reding; Eva Corets; Bjorn Rettig | 120h | 4,008 |
| 62 | 4.4 | Quality Control Design |  | 1d | 2019-05-09 14:24 | 2019-05-10 14:24 | 61 | 0.03d | 0d | Maria Hammond; Jim Kim | 16h | 444 |
| 63 | 4.5 | Final Production Plan Approval |  | 2h | 2019-05-10 14:24 | 2019-05-10 16:24 | 62 | 0.03d | 0d | Judy Lew; Frank Zhang | 4h | 159 |
| 64 | 4.6 | Production planning complete | milestone | 0d | 2019-05-10 16:24 | 2019-05-10 16:24 | 63 | 0.03d | 0d |  |  |  |
| 65 | 5 | **Marketing** |  | 16.95d | 2019-05-10 16:24 | 2019-06-05 16:00 |  | 0d |  |  | 646.8h | 13,902.25 |
| 66 | 5.1 | Marketing phase begins | milestone | 0d | 2019-05-10 16:24 | 2019-05-10 16:24 | 64 | 0.03d | 0d |  |  |  |
| 67 | 5.2 | Marketing Strategy Development |  | 1.07d | 2019-05-10 16:24 | 2019-05-13 16:00 | 66 | 0d |  | Scott Seely; Brad Sutton; Brenda Diaz | 22.8h | 448.25 |
| 68 | 5.3 | Marketing Plan Development and Approval |  | 1d | 2019-05-13 16:00 | 2019-05-14 16:00 | 67 | 0d |  | Frank Zhang; Judy Lew; Ryan Ihrig | 24h | 764 |
| 69 | 5.4 | Marketing Materials |  | 3w | 2019-05-14 16:00 | 2019-06-05 16:00 | 68 | 0d |  | Jeff Pike; Brenda Diaz; Brad Sutton; Ryan Ihrig; Yan Li | 600h | 12,690 |
| 70 | 5.5 | Marketing phase complete | milestone | 0d | 2019-06-05 16:00 | 2019-06-05 16:00 | 69 | 0d |  |  |  |  |
| 71 | 6 | Project Management | milestone | 0d | 2019-01-07 08:00 | 2019-01-07 08:00 |  | 105.88d |  |  |  |  |
